# task22

How a schedule from MS Project changed from version to version. A marks actual dates.

## Version 1 (data date 2023-04-28, saved 2023-03-21, file task1.mpp)

| ID | WBS | Task | Duration | Start | Finish | Predecessors | Complete | Total float | Constraint |
| --- | --- | --- | --- | --- | --- | --- | --- | --- | --- |
| 1 |  | Начало проекта | 0w | 2023-03-01 09:00 A | 2023-03-01 09:00 A |  | 100% |  |  |
| 2 | 2 | **Создание интерфейса** | 83.45d | 2023-03-01 10:00 A | 2023-07-03 14:33 | 1 | 84% | 0d |  |
| 3 | 2.1 | **Разработка дизайна интерфейса** | 34.55d | 2023-03-01 10:00 A | 2023-04-19 15:24 A |  | 100% |  |  |
| 4 |  | Разработка 2D графических элементов | 3w | 2023-03-01 10:00 A | 2023-03-23 12:00 A |  | 100% |  |  |
| 5 |  | Разработка 3D графических элементов | 2w | 2023-03-01 10:00 A | 2023-03-20 16:12 A | 4SS | 100% |  |  |
| 6 |  | Создание заставки | 3w | 2023-03-24 17:12 A | 2023-04-19 15:24 A | 5 | 100% |  |  |
| 7 |  | Программирование интерфейса | 1.5w | 2023-06-22 09:33 | 2023-07-03 14:33 | 3, 12 |  | 0d |  |
| 8 | 3 | **Построение базы объектов** | 48.85d | 2023-03-30 09:00 A | 2023-06-09 16:49 |  | 35% | 35.38d |  |
| 9 |  | Анализ и построение структуры базы объектов | 2w | 2023-03-30 09:00 A | 2023-04-13 15:38 A |  | 100% |  |  |
| 10 |  | Программирование средств обработки базы объектов | 1.5w | 2023-04-14 11:49 A | 2023-04-25 16:49 | 9 | 90% | 35.38d |  |
| 11 |  | Наполнение базы объектов | 6w | 2023-04-25 16:49 | 2023-06-09 16:49 | 10 |  | 35.38d |  |
| 12 | 4 | **Создание ядра GIS** | 75.95d | 2023-03-01 10:00 A | 2023-06-22 09:33 |  | 49% | 0d |  |
| 13 |  | Анализ и проектирование ядра | 4.12w | 2023-03-01 10:00 A | 2023-03-30 18:00 A |  | 100% |  |  |
| 14 |  | Создание модели ядра | 2.05w | 2023-03-31 09:00 A | 2023-04-14 10:49 A | 13 | 100% |  |  |
| 15 |  | Тестирование модели ядра | 0.25w | 2023-04-14 10:49 A | 2023-04-25 10:00 A | 14 | 100% |  |  |
| 16 |  | Создание рабочей версии ядра | 6.79w | 2023-05-02 09:00 | 2023-06-22 09:33 | 15 |  | 0d |  |
| 17 |  | Создание мультимедиа – наполнения | 6w | 2023-04-19 15:24 A | 2023-06-06 12:24 | 3 | 21% | 38.81d |  |
| 18 |  | Создание справочной системы | 2w | 2023-07-17 09:00 | 2023-07-31 10:00 | 7 |  | 1.11d |  |
| 19 | 7 | **Создание руководства пользователя** | 17.25d | 2023-06-19 14:33 | 2023-07-12 16:33 | 7FS-10d |  | 0d |  |
| 20 |  | Разработка дизайна руководства | 1w | 2023-06-19 14:33 | 2023-07-11 12:33 |  |  | 0d |  |
| 21 |  | Написание руководства пользователя | 3w | 2023-06-21 14:33 | 2023-07-12 16:33 | 20SS+2d |  | 0d |  |
| 22 | 8 | **Создание web – сайта и поддержка** | 21.5d | 2023-06-21 14:33 | 2023-07-21 09:33 |  |  | 0d |  |
| 23 |  | Разработка структуры сайта | 1d | 2023-06-21 14:33 | 2023-06-22 14:33 | 21SS |  | 0d |  |
| 24 |  | Разработка дизайна сайта | 1.02w | 2023-06-22 14:33 | 2023-06-29 15:33 | 23 |  | 0d |  |
| 25 |  | Наполнение сайта | 3w | 2023-06-29 16:33 | 2023-07-21 09:33 | 24 |  | 0d |  |
| 26 |  | Тестирование сайта | 2.43w | 2023-07-14 09:33 | 2023-08-01 10:51 | 22FS-1w |  | 0d |  |
| 27 |  | Сдача сайта в эксплуатацию | 0w | 2023-08-01 10:51 | 2023-08-01 10:51 | 26 |  | 0d |  |
| 28 | 11 | **Совещание** | 100.12d | 2023-03-01 09:00 A | 2023-07-26 10:00 |  | 41% | 0d |  |
| 29 |  | Совещание 1 | 1h | 2023-03-01 09:00 A | 2023-03-01 10:00 A |  | 100% |  | start no earlier than 2023-03-01 09:00 |
| 30 |  | Совещание 2 | 1h | 2023-03-08 09:00 A | 2023-03-08 10:00 A |  | 100% |  | start no earlier than 2023-03-08 09:00 |
| 31 |  | Совещание 3 | 1h | 2023-03-15 09:00 A | 2023-03-15 10:00 A |  | 100% |  | start no earlier than 2023-03-15 09:00 |
| 32 |  | Совещание 4 | 1h | 2023-03-22 09:00 A | 2023-03-22 10:00 A |  | 100% |  | start no earlier than 2023-03-22 09:00 |
| 33 |  | Совещание 5 | 1h | 2023-03-29 09:00 A | 2023-03-29 10:00 A |  | 100% |  | start no earlier than 2023-03-29 09:00 |
| 34 |  | Совещание 6 | 1h | 2023-04-05 09:00 A | 2023-04-05 10:00 A |  | 100% |  | start no earlier than 2023-04-05 09:00 |
| 35 |  | Совещание 7 | 1h | 2023-04-12 09:00 A | 2023-04-12 10:00 A |  | 100% |  | start no earlier than 2023-04-12 09:00 |
| 36 |  | Совещание 8 | 1h | 2023-04-19 09:00 A | 2023-04-19 10:00 A |  | 100% |  | start no earlier than 2023-04-19 09:00 |
| 37 |  | Совещание 9 | 1h | 2023-04-26 09:00 A | 2023-04-26 10:00 A |  | 100% |  | start no earlier than 2023-04-26 09:00 |
| 38 |  | Совещание 10 | 1h | 2023-05-03 09:00 | 2023-05-03 10:00 |  |  |  | start no earlier than 2023-05-03 09:00 |
| 39 |  | Совещание 11 | 1h | 2023-05-10 09:00 | 2023-05-10 10:00 |  |  |  | start no earlier than 2023-05-10 09:00 |
| 40 |  | Совещание 12 | 1h | 2023-05-17 09:00 | 2023-05-17 10:00 |  |  |  | start no earlier than 2023-05-17 09:00 |
| 41 |  | Совещание 13 | 1h | 2023-05-24 09:00 | 2023-05-24 10:00 |  |  |  | start no earlier than 2023-05-24 09:00 |
| 42 |  | Совещание 14 | 1h | 2023-05-31 09:00 | 2023-05-31 10:00 |  |  |  | start no earlier than 2023-05-31 09:00 |
| 43 |  | Совещание 15 | 1h | 2023-06-07 09:00 | 2023-06-07 10:00 |  |  |  | start no earlier than 2023-06-07 09:00 |
| 44 |  | Совещание 16 | 1h | 2023-06-14 09:00 | 2023-06-14 10:00 |  |  |  | start no earlier than 2023-06-14 09:00 |
| 45 |  | Совещание 17 | 1h | 2023-06-21 09:00 | 2023-06-21 10:00 |  |  |  | start no earlier than 2023-06-21 09:00 |
| 46 |  | Совещание 18 | 1h | 2023-06-28 09:00 | 2023-06-28 10:00 |  |  |  | start no earlier than 2023-06-28 09:00 |
| 47 |  | Совещание 19 | 1h | 2023-07-05 09:00 | 2023-07-05 10:00 |  |  |  | start no earlier than 2023-07-05 09:00 |
| 48 |  | Совещание 20 | 1h | 2023-07-12 09:00 | 2023-07-12 10:00 |  |  |  | start no earlier than 2023-07-12 09:00 |
| 49 |  | Совещание 21 | 1h | 2023-07-19 09:00 | 2023-07-19 10:00 |  |  |  | start no earlier than 2023-07-19 09:00 |
| 50 |  | Совещание 22 | 1h | 2023-07-26 09:00 | 2023-07-26 10:00 |  |  |  | start no earlier than 2023-07-26 09:00 |

## Version 2 (saved 2023-03-27, file task3.mpp)

Last finish 2023-08-01 → 2023-09-15 (+45d). Complete tasks 17 → 0.

Added:

| ID | Task | Duration | Start | Finish |
| --- | --- | --- | --- | --- |
| 6 | **Дизайн** | 108d | 2023-03-01 | 2023-08-04 |

Removed: 2 Создание интерфейса; 3 Разработка дизайна интерфейса; 12 Создание ядра GIS; 19 Создание руководства пользователя; 22 Создание web – сайта и поддержка; 32 Совещание 4; 33 Совещание 5; 34 Совещание 6; 35 Совещание 7; 36 Совещание 8; 37 Совещание 9; 38 Совещание 10; 39 Совещание 11; 40 Совещание 12; 41 Совещание 13; 42 Совещание 14; 43 Совещание 15; 44 Совещание 16; 45 Совещание 17; 46 Совещание 18; 47 Совещание 19; 48 Совещание 20; 49 Совещание 21; 50 Совещание 22

Changed:

| ID | Task | Start | Finish | Duration | Complete | Total float | Predecessors | Other |
| --- | --- | --- | --- | --- | --- | --- | --- | --- |
| 1 | Начало проекта | 2023-03-01 09:00 A → 2023-03-01 | 2023-03-01 09:00 A → 2023-03-01 |  | 100% → 0% | none → 70d |  | baseline start 2023-03-01 09:00 → none; baseline finish 2023-03-01 09:00 → none |
| 2 | **Проектирование** | 2023-03-01 09:00 A → 2023-03-01 | 2023-03-01 10:00 A → 2023-07-28 (+149d) | 1h → 103d | 100% → 0% | none → 0d |  | was named Совещание 1; constraint start no earlier than 2023-03-01 09:00 → none; resources 3D аниматор; Web-дизайнер; Ведущий программист; Мультимедиа-корреспондент; Системный аналитик; Художник-дизайнер; Технический писатель → none; baseline start 2023-03-01 09:00 → none; baseline finish 2023-03-01 10:00 → none |
| 3 | Анализ и проектирование ядра | 2023-03-01 10:00 A → 2023-03-01 | 2023-03-30 18:00 A → 2023-03-22 (-8d) | 4.12w → 3w | 100% → 0% | none → 0d |  | baseline start 2023-03-01 10:00 → none; baseline finish 2023-03-23 12:00 → none |
| 4 | Анализ и построение структуры базы объектов | 2023-03-30 09:00 A → 2023-03-23 (-7d) | 2023-04-13 15:38 A → 2023-04-05 (-8d) |  | 100% → 0% | none → 38d |  | baseline start 2023-03-23 14:00 → none; baseline finish 2023-04-06 15:00 → none |
| 5 | Разработка структуры сайта | 2023-06-21 14:33 → 2023-07-28 (+37d) | 2023-06-22 14:33 → 2023-07-28 (+36d) |  |  |  |  | baseline start 2023-06-05 11:23 → none; baseline finish 2023-06-06 11:23 → none |
| 7 | Разработка дизайна сайта | 2023-06-22 14:33 → 2023-07-31 (+39d) | 2023-06-29 15:33 → 2023-08-04 (+36d) | 1.02w → 1w |  |  |  | baseline start 2023-06-06 11:23 → none; baseline finish 2023-06-14 12:23 → none |
| 8 | Разработка 2D графических элементов | 2023-03-01 10:00 A → 2023-03-01 | 2023-03-23 12:00 A → 2023-03-22 (-1d) |  | 100% → 0% | none → 83d |  | baseline start 2023-03-01 10:00 → none; baseline finish 2023-03-23 12:00 → none |
| 9 | Разработка 3D графических элементов | 2023-03-01 10:00 A → 2023-03-01 | 2023-03-20 16:12 A → 2023-03-15 (-5d) |  | 100% → 0% | none → 83d |  | baseline start 2023-03-01 10:00 → none; baseline finish 2023-03-16 11:00 → none |
| 10 | **Разработка** | 2023-03-01 09:00 A → 2023-03-16 (+15d) | 2023-07-26 10:00 → 2023-08-25 (+30d) | 100.12d → 113d | 41% → 0% | 0d → 5d |  | was named Совещание; baseline start 2023-03-01 09:00 → none; baseline finish 2023-07-12 10:00 → none |
| 11 | Создание модели ядра | 2023-03-31 09:00 A → 2023-03-23 (-8d) | 2023-04-14 10:49 A → 2023-04-26 (+12d) | 2.05w → 5w | 100% → 0% | none → 0d |  | resources Программист#1; Ведущий программист; Программист#2; Программист#3; Программист#4 → Программист#1; Ведущий программист; baseline start 2023-03-23 12:00 → none; baseline finish 2023-04-06 14:49 → none |
| 12 | Создание заставки | 2023-03-24 17:12 A → 2023-03-16 (-8d) | 2023-04-19 15:24 A → 2023-04-05 (-14d) |  | 100% → 0% | none → 83d |  | baseline start 2023-03-16 12:00 → none; baseline finish 2023-04-06 15:00 → none |
| 13 | Наполнение сайта | 2023-06-29 16:33 → 2023-08-07 (+39d) | 2023-07-21 09:33 → 2023-08-25 (+35d) |  |  |  |  | baseline start 2023-06-14 14:00 → none; baseline finish 2023-07-05 16:00 → none |
| 14 | Создание мультимедиа – наполнения | 2023-04-19 15:24 A → 2023-04-06 (-13d) | 2023-06-06 12:24 → 2023-05-22 (-15d) |  | 21% → 0% | 38.81d → 83d | Разработка дизайна интерфейса → 12 | baseline start 2023-04-06 15:00 → none; baseline finish 2023-05-24 12:00 → none |
| 15 | Программирование интерфейса | 2023-06-22 09:33 → 2023-07-19 (+27d) | 2023-07-03 14:33 → 2023-08-08 (+36d) | 1.5w → 3w |  |  | Разработка дизайна интерфейса, Создание ядра GIS → 16 | resources Программист#3; Программист#4; Программист#1; Программист#2 → Программист#3; Программист#4; baseline start 2023-06-05 16:23 → none; baseline finish 2023-06-16 11:23 → none |
| 16 | Создание рабочей версии ядра | 2023-05-02 09:00 → 2023-05-05 (+3d) | 2023-06-22 09:33 → 2023-07-18 (+26d) | 6.79w → 10w |  |  |  | resources Ведущий программист; Программист#1; Программист#2; Программист#3; Программист#4 → Ведущий программист; Программист#1; Программист#2; baseline start 2023-04-07 17:49 → none; baseline finish 2023-06-05 16:23 → none |
| 17 | **Руководство** | 2023-03-08 09:00 A → 2023-07-26 (+140d) | 2023-03-08 10:00 A → 2023-08-31 (+176d) | 1h → 27d | 100% → 0% | none → 0d |  | was named Совещание 2; constraint start no earlier than 2023-03-08 09:00 → none; resources 3D аниматор; Web-дизайнер; Ведущий программист; Мультимедиа-корреспондент; Системный аналитик; Художник-дизайнер; Технический писатель → none; baseline start 2023-03-08 09:00 → none; baseline finish 2023-03-08 10:00 → none |
| 18 | Создание справочной системы | 2023-07-17 09:00 → 2023-08-18 (+32d) | 2023-07-31 10:00 → 2023-08-31 (+31d) |  |  | 1.11d → 11d |  | baseline start 2023-06-27 15:23 → none; baseline finish 2023-07-11 16:23 → none |
| 19 | Разработка дизайна руководства | 2023-06-19 14:33 → 2023-07-26 (+37d) | 2023-07-11 12:33 → 2023-08-08 (+28d) |  |  |  | none → 15FS-10d | baseline start 2023-06-01 11:23 → none; baseline finish 2023-06-26 10:23 → none |
| 20 | Написание руководства пользователя | 2023-06-21 14:33 → 2023-07-28 (+37d) | 2023-07-12 16:33 → 2023-08-17 (+36d) |  |  |  |  | baseline start 2023-06-05 11:23 → none; baseline finish 2023-06-27 14:23 → none |
| 21 | **Тестирование** | 2023-03-15 09:00 A → 2023-04-27 (+43d) | 2023-03-15 10:00 A → 2023-09-15 (+184d) | 1h → 98d | 100% → 0% | none → 0d |  | was named Совещание 3; constraint start no earlier than 2023-03-15 09:00 → none; resources 3D аниматор; Web-дизайнер; Ведущий программист; Мультимедиа-корреспондент; Системный аналитик; Художник-дизайнер; Технический писатель → none; baseline start 2023-03-15 09:00 → none; baseline finish 2023-03-15 10:00 → none |
| 22 | Тестирование модели ядра | 2023-04-14 10:49 A → 2023-04-27 (+13d) | 2023-04-25 10:00 A → 2023-05-04 (+9d) | 0.25w → 1w | 100% → 0% | none → 0d |  | resources Программист#1; Программист#2; Программист#3; Программист#4 → Программист#1; baseline start 2023-04-06 14:49 → none; baseline finish 2023-04-07 16:49 → none |
| 23 | Тестирование сайта | 2023-07-14 09:33 → 2023-08-21 (+38d) | 2023-08-01 10:51 → 2023-09-15 (+45d) | 2.43w → 4w |  |  | Создание web – сайта и поддержкаFS-1w → 13FS-1w | resources Ведущий программист; Программист#1; Программист#2; Программист#3; Программист#4 → Ведущий программист; Программист#1; Программист#2; baseline start 2023-06-28 16:00 → none; baseline finish 2023-07-14 17:17 → none |
| 24 | **Построение базы объектов** | 2023-03-30 09:00 A → 2023-04-06 (+7d) | 2023-06-09 16:49 → 2023-07-25 (+46d) | 48.85d → 75d | 35% → 0% | 35.38d → 38d |  | baseline start 2023-03-23 14:00 → none; baseline finish 2023-06-05 11:49 → none |
| 25 | Программирование средств обработки базы объектов | 2023-04-14 11:49 A → 2023-04-06 (-8d) | 2023-04-25 16:49 → 2023-04-26 (+1d) | 1.5w → 3w | 90% → 0% | 35.38d → 38d |  | resources Программист#3; Программист#4; Программист#1; Программист#2 → Программист#3; Программист#4; baseline start 2023-04-07 16:49 → none; baseline finish 2023-04-19 11:49 → none |
| 26 | Наполнение базы объектов | 2023-04-25 16:49 → 2023-04-27 (+2d) | 2023-06-09 16:49 → 2023-07-25 (+46d) | 6w → 12w |  | 35.38d → 38d |  | resources Наборщик данных#1; Наборщик данных#2; Наборщик данных#3; Наборщик данных#4; Наборщик данных#5; Наборщик данных#6; Наборщик данных#7; Наборщик данных#8; Наборщик данных#9; Наборщик данных#10 → Наборщик данных#1; Наборщик данных#2; Наборщик данных#3; Наборщик данных#4; Наборщик данных#5; baseline start 2023-04-19 11:49 → none; baseline finish 2023-06-05 11:49 → none |
| 27 | Сдача сайта в эксплуатацию | 2023-08-01 10:51 → 2023-09-15 (+45d) | 2023-08-01 10:51 → 2023-09-15 (+45d) |  |  |  |  | baseline start 2023-07-14 17:17 → none; baseline finish 2023-07-14 17:17 → none |
