# Карта города

How a schedule from MS Project changed from version to version. A marks actual dates.

## Version 1 (data date 2023-05-12, saved 2023-03-13, file lab_04_task_1_4.mpp)

| ID | WBS | Task | Duration | Start | Finish | Predecessors | Complete | Total float | Constraint |
| --- | --- | --- | --- | --- | --- | --- | --- | --- | --- |
| 1 |  | Начало проекта | 0d | 2023-03-01 09:00 | 2023-03-01 09:00 |  |  | 10.38d |  |
| 2 | 2 | **Создание интерфейса** | 73.7d | 2023-03-01 10:00 A | 2023-06-19 16:33 | 1 | 36% | 0d |  |
| 3 | 2.1 | **Разработка дизайна интерфейса** | 28.88d | 2023-03-01 10:00 A | 2023-04-11 18:00 |  | 42% | 35.98d |  |
| 4 |  | Разработка 2D графических элементов | 3w | 2023-03-01 10:00 | 2023-03-23 13:00 |  |  | 49.48d |  |
| 5 |  | Разработка 3D графических элементов | 2w | 2023-03-01 10:00 | 2023-03-16 12:00 | 4SS |  | 54.61d |  |
| 6 |  | Создание заставки | 3.65w | 2023-03-16 12:00 A | 2023-04-11 18:00 A | 5 | 100% |  |  |
| 7 |  | Программирование интерфейса | 1.5w | 2023-06-07 11:33 | 2023-06-19 16:33 | 3, 12 |  | 0d |  |
| 8 | 3 | **Построение базы объектов** | 80.38d | 2023-03-23 14:00 | 2023-07-19 17:00 |  |  | 0.61d |  |
| 9 |  | Анализ и построение структуры базы объектов | 2w | 2023-03-23 14:00 | 2023-04-06 17:00 |  |  | 0.61d |  |
| 10 |  | Программирование средств обработки базы объектов | 2w | 2023-04-06 17:00 | 2023-04-20 17:00 | 9 |  | 0.61d |  |
| 11 |  | Наполнение базы объектов | 12w | 2023-04-20 17:00 | 2023-07-19 17:00 | 10 |  | 0.61d |  |
| 12 | 4 | **Создание ядра GIS** | 66.2d | 2023-03-01 10:00 | 2023-06-07 11:33 |  |  | 0d |  |
| 13 |  | Анализ и проектирование ядра | 3w | 2023-03-01 10:00 | 2023-03-23 13:00 |  |  | 0d |  |
| 14 |  | Создание модели ядра | 2.05w | 2023-03-23 14:00 | 2023-04-06 15:49 | 13 |  | 0d |  |
| 15 |  | Тестирование модели ядра | 1w | 2023-04-06 15:49 | 2023-04-13 15:49 | 14 |  | 0d |  |
| 16 |  | Создание рабочей версии ядра | 7.12w | 2023-04-13 15:49 | 2023-06-07 11:33 | 15 |  | 0d |  |
| 17 |  | Создание мультимедиа - наполнения | 6w | 2023-04-12 09:00 | 2023-05-30 13:00 | 3 |  | 35.98d |  |
| 18 |  | Создание справочной системы | 2w | 2023-06-28 16:33 | 2023-07-12 16:33 | 7 |  | 5.66d |  |
| 19 | 7 | **Создание руководства пользователя** | 17d | 2023-06-02 16:33 | 2023-06-28 16:33 | 7FS-10d |  | 0d |  |
| 20 |  | Разработка дизайна руководства | 1w | 2023-06-02 16:33 | 2023-06-09 16:33 |  |  | 0d |  |
| 21 |  | Написание руководства пользователя | 3w | 2023-06-06 16:33 | 2023-06-28 16:33 | 20SS+2d |  | 0d |  |
| 22 | 8 | **Создание web-сайта и поддержка** | 23.5d | 2023-06-06 16:33 | 2023-07-11 11:33 |  |  | 0d |  |
| 23 |  | Разработка структуры сайта | 1d | 2023-06-06 16:33 | 2023-06-08 16:33 | 21SS |  | 0d |  |
| 24 |  | Разработка дизайна сайта | 1.2w | 2023-06-08 16:33 | 2023-06-19 16:33 | 23 |  | 0d |  |
| 25 |  | Наполнение сайта | 3w | 2023-06-19 16:33 | 2023-07-11 11:33 | 24 |  | 0d |  |
| 26 |  | Тестирование сайта | 2.43w | 2023-07-04 11:33 | 2023-07-20 12:51 | 22FS-1w |  | 0d |  |
| 27 |  | Сдача сайта в эксплуатацию | 0d | 2023-07-20 12:51 | 2023-07-20 12:51 | 26 |  | 0d |  |
| 28 | 11 | **Совещание** | 19.12d | 2023-03-01 09:00 | 2023-03-29 10:00 |  |  | 0d |  |
| 29 |  | Совещание 1 | 1h | 2023-03-01 09:00 | 2023-03-01 10:00 |  |  |  | start no earlier than 2023-03-01 09:00 |
| 30 |  | Совещание 2 | 1h | 2023-03-09 09:00 | 2023-03-09 10:00 |  |  |  | start no earlier than 2023-03-08 09:00 |
| 31 |  | Совещание 3 | 1h | 2023-03-15 09:00 | 2023-03-15 10:00 |  |  |  | start no earlier than 2023-03-15 09:00 |
| 32 |  | Совещание 4 | 1h | 2023-03-22 09:00 | 2023-03-22 10:00 |  |  |  | start no earlier than 2023-03-22 09:00 |
| 33 |  | Совещание 5 | 1h | 2023-03-29 09:00 | 2023-03-29 10:00 |  |  |  | start no earlier than 2023-03-29 09:00 |
| 34 | 12 | **Презентация** | 66.25d | 2023-04-03 09:00 | 2023-07-10 11:00 |  |  | 0d |  |
| 35 |  | Презентация 1 | 2h | 2023-04-03 09:00 | 2023-04-03 11:00 |  |  |  | start no earlier than 2023-04-03 09:00 |
| 36 |  | Презентация 2 | 2h | 2023-04-17 09:00 | 2023-04-17 11:00 |  |  |  | start no earlier than 2023-04-17 09:00 |
| 37 |  | Презентация 3 | 2h | 2023-05-02 09:00 | 2023-05-02 11:00 |  |  |  | start no earlier than 2023-05-01 09:00 |
| 38 |  | Презентация 4 | 2h | 2023-05-15 09:00 | 2023-05-15 11:00 |  |  |  | start no earlier than 2023-05-15 09:00 |
| 39 |  | Презентация 5 | 2h | 2023-05-29 09:00 | 2023-05-29 11:00 |  |  |  | start no earlier than 2023-05-29 09:00 |
| 40 |  | Презентация 6 | 2h | 2023-06-13 09:00 | 2023-06-13 11:00 |  |  |  | start no earlier than 2023-06-12 09:00 |
| 41 |  | Презентация 7 | 2h | 2023-06-26 09:00 | 2023-06-26 11:00 |  |  |  | start no earlier than 2023-06-26 09:00 |
| 42 |  | Презентация 8 | 2h | 2023-07-10 09:00 | 2023-07-10 11:00 |  |  |  | start no earlier than 2023-07-10 09:00 |

## Version 2 (data date 2023-05-12, saved 2023-03-13, file lab_04_task_3.mpp)

Last finish 2023-07-20 → 2023-07-13 (-7d).

Changed:

| ID | Task | Start | Finish | Duration | Total float | Other |
| --- | --- | --- | --- | --- | --- | --- |
| 2 | **Создание интерфейса** |  | 2023-06-19 16:33 → 2023-06-09 16:47 (-10d) | 73.7d → 68.72d | 0d → 2.37d |  |
| 7 | Программирование интерфейса | 2023-06-07 11:33 → 2023-05-31 11:47 (-7d) | 2023-06-19 16:33 → 2023-06-09 16:47 (-10d) |  | 0d → 2.37d |  |
| 8 | **Построение базы объектов** |  | 2023-07-19 17:00 → 2023-07-13 17:00 (-6d) | 80.38d → 76.38d | 0.61d → 0d |  |
| 10 | Программирование средств обработки базы объектов |  | 2023-04-20 17:00 → 2023-04-14 17:00 (-6d) | 2w → 1.2w | 0.61d → 0d | resources Программист #3; Программист #4; Программист #2 → Программист #3; Программист #4; Программист #2; Программист #1; Программист #5 |
| 11 | Наполнение базы объектов | 2023-04-20 17:00 → 2023-04-14 17:00 (-6d) | 2023-07-19 17:00 → 2023-07-13 17:00 (-6d) |  | 0.61d → 0d |  |
| 12 | **Создание ядра GIS** |  | 2023-06-07 11:33 → 2023-05-31 11:47 (-7d) | 66.2d → 61.22d | 0d → 2.37d |  |
| 14 | Создание модели ядра |  | 2023-04-06 15:49 → 2023-04-05 09:26 (-1d) | 2.05w → 1.71w | 0d → 2.37d | resources Ведущий программист; Программист #1; Программист #2; Программист #3; Программист #4 → Ведущий программист; Программист #1; Программист #2; Программист #3; Программист #4; Программист #5 |
| 15 | Тестирование модели ядра | 2023-04-06 15:49 → 2023-04-05 09:26 (-1d) | 2023-04-13 15:49 → 2023-04-06 09:26 (-7d) | 1w → 0.2w | 0d → 2.37d | resources Программист #1 → Программист #1; Программист #2; Программист #3; Программист #4; Программист #5 |
| 16 | Создание рабочей версии ядра | 2023-04-13 15:49 → 2023-04-06 09:26 (-7d) | 2023-06-07 11:33 → 2023-05-31 11:47 (-7d) | 7.12w → 7.26w | 0d → 2.37d | resources Ведущий программист; Программист #1; Программист #2; Программист #3; Программист #4 → Ведущий программист; Программист #1; Программист #2; Программист #3; Программист #4; Программист #5 |
| 18 | Создание справочной системы | 2023-06-28 16:33 → 2023-06-21 16:47 (-7d) | 2023-07-12 16:33 → 2023-07-05 16:47 (-7d) |  | 5.66d → 6.03d |  |
| 19 | **Создание руководства пользователя** | 2023-06-02 16:33 → 2023-05-26 16:47 (-7d) | 2023-06-28 16:33 → 2023-06-21 16:47 (-7d) |  | 0d → 2.37d |  |
| 20 | Разработка дизайна руководства | 2023-06-02 16:33 → 2023-05-26 16:47 (-7d) | 2023-06-09 16:33 → 2023-06-02 16:47 (-7d) |  | 0d → 2.37d |  |
| 21 | Написание руководства пользователя | 2023-06-06 16:33 → 2023-05-30 16:47 (-7d) | 2023-06-28 16:33 → 2023-06-21 16:47 (-7d) |  | 0d → 2.37d |  |
| 22 | **Создание web-сайта и поддержка** | 2023-06-06 16:33 → 2023-05-30 16:47 (-7d) | 2023-07-11 11:33 → 2023-07-04 11:47 (-7d) |  | 0d → 2.37d |  |
| 23 | Разработка структуры сайта | 2023-06-06 16:33 → 2023-05-30 16:47 (-7d) | 2023-06-08 16:33 → 2023-06-01 16:47 (-7d) |  | 0d → 2.37d |  |
| 24 | Разработка дизайна сайта | 2023-06-08 16:33 → 2023-06-01 16:47 (-7d) | 2023-06-19 16:33 → 2023-06-09 16:47 (-10d) |  | 0d → 2.37d |  |
| 25 | Наполнение сайта | 2023-06-19 16:33 → 2023-06-09 16:47 (-10d) | 2023-07-11 11:33 → 2023-07-04 11:47 (-7d) |  | 0d → 2.37d |  |
| 26 | Тестирование сайта | 2023-07-04 11:33 → 2023-06-27 11:47 (-7d) | 2023-07-20 12:51 → 2023-07-11 14:01 (-9d) | 2.43w → 2.03w | 0d → 2.37d | resources Ведущий программист; Программист #1; Программист #2; Программист #3; Программист #4 → Ведущий программист; Программист #1; Программист #2; Программист #3; Программист #4; Программист #5 |
| 27 | Сдача сайта в эксплуатацию | 2023-07-20 12:51 → 2023-07-11 14:01 (-9d) | 2023-07-20 12:51 → 2023-07-11 14:01 (-9d) |  | 0d → 2.37d |  |
| 37 | Презентация 3 |  |  |  |  | resources Ведущий программист; Системный аналитик; Мультимедиа-корреспондент; Web-дизайнер; Пачка бумаги [2 шт] → Ведущий программист; Мультимедиа-корреспондент; Web-дизайнер; Пачка бумаги [2 шт] |
| 38 | Презентация 4 |  |  |  |  | resources Ведущий программист; Системный аналитик; Мультимедиа-корреспондент; Web-дизайнер; Пачка бумаги [2 шт] → Ведущий программист; Мультимедиа-корреспондент; Web-дизайнер; Пачка бумаги [2 шт] |
| 39 | Презентация 5 |  |  |  |  | resources Ведущий программист; Системный аналитик; Мультимедиа-корреспондент; Web-дизайнер; Пачка бумаги [2 шт] → Ведущий программист; Мультимедиа-корреспондент; Web-дизайнер; Пачка бумаги [2 шт] |
| 40 | Презентация 6 |  |  |  |  | resources Ведущий программист; Системный аналитик; Мультимедиа-корреспондент; Web-дизайнер; Пачка бумаги [2 шт] → Ведущий программист; Мультимедиа-корреспондент; Web-дизайнер; Пачка бумаги [2 шт] |
| 41 | Презентация 7 |  |  |  |  | resources Ведущий программист; Системный аналитик; Мультимедиа-корреспондент; Web-дизайнер; Пачка бумаги [2 шт] → Ведущий программист; Web-дизайнер; Пачка бумаги [2 шт] |
| 42 | Презентация 8 |  |  |  |  | resources Ведущий программист; Системный аналитик; Мультимедиа-корреспондент; Web-дизайнер; Пачка бумаги [2 шт] → Ведущий программист; Web-дизайнер; Пачка бумаги [2 шт] |

## Version 3 (data date 2023-05-12, saved 2023-03-13, file lab_04_task_4.mpp)

Last finish 2023-07-13 → 2023-07-05 (-8d).

Removed: 42 Презентация 8

Changed:

| ID | Task | Start | Finish | Duration | Total float | Other |
| --- | --- | --- | --- | --- | --- | --- |
| 2 | **Создание интерфейса** |  | 2023-06-09 16:47 → 2023-06-07 12:27 (-2d) | 68.72d → 66.31d | 2.37d → 0d |  |
| 7 | Программирование интерфейса | 2023-05-31 11:47 → 2023-05-26 17:27 (-5d) | 2023-06-09 16:47 → 2023-06-07 12:27 (-2d) |  | 2.37d → 0d |  |
| 8 | **Построение базы объектов** |  | 2023-07-13 17:00 → 2023-06-19 15:51 (-24d) | 76.38d → 58.23d | 0d → 11.98d |  |
| 10 | Программирование средств обработки базы объектов |  | 2023-04-14 17:00 → 2023-04-13 17:00 (-1d) | 1.2w → 1w | 0d → 11.98d | resources Программист #3; Программист #4; Программист #2; Программист #1; Программист #5 → Программист #3; Программист #4; Программист #2; Программист #1; Программист #5; Программист #6 |
| 11 | Наполнение базы объектов | 2023-04-14 17:00 → 2023-04-13 17:00 (-1d) | 2023-07-13 17:00 → 2023-06-19 15:51 (-24d) | 12w → 8.57w | 0d → 11.98d | resources Наборщик данных #1; Наборщик данных #2; Наборщик данных #3; Наборщик данных #4; Наборщик данных #5 → Наборщик данных #1; Наборщик данных #2; Наборщик данных #3; Наборщик данных #4; Наборщик данных #5; Наборщик данных #6; Наборщик данных #7 |
| 12 | **Создание ядра GIS** |  | 2023-05-31 11:47 → 2023-05-26 17:27 (-5d) | 61.22d → 58.81d | 2.37d → 0d |  |
| 14 | Создание модели ядра |  | 2023-04-05 09:26 → 2023-04-03 16:26 (-2d) | 1.71w → 1.46w | 2.37d → 0d | resources Ведущий программист; Программист #1; Программист #2; Программист #3; Программист #4; Программист #5 → Ведущий программист; Программист #1; Программист #2; Программист #3; Программист #4; Программист #5; Программист #6 |
| 15 | Тестирование модели ядра | 2023-04-05 09:26 → 2023-04-03 16:26 (-2d) | 2023-04-06 09:26 → 2023-04-04 15:06 (-2d) | 0.2w → 0.17w | 2.37d → 0d | resources Программист #1; Программист #2; Программист #3; Программист #4; Программист #5 → Программист #1; Программист #2; Программист #3; Программист #4; Программист #5; Программист #6 |
| 16 | Создание рабочей версии ядра | 2023-04-06 09:26 → 2023-04-04 15:06 (-2d) | 2023-05-31 11:47 → 2023-05-26 17:27 (-5d) | 7.26w → 7.06w | 2.37d → 0d |  |
| 18 | Создание справочной системы | 2023-06-21 16:47 → 2023-06-19 12:27 (-2d) | 2023-07-05 16:47 → 2023-07-03 12:27 (-2d) |  | 6.03d → 2.28d |  |
| 19 | **Создание руководства пользователя** | 2023-05-26 16:47 → 2023-05-24 12:27 (-2d) | 2023-06-21 16:47 → 2023-06-19 12:27 (-2d) |  | 2.37d → 0d |  |
| 20 | Разработка дизайна руководства | 2023-05-26 16:47 → 2023-05-24 12:27 (-2d) | 2023-06-02 16:47 → 2023-05-31 12:27 (-2d) |  | 2.37d → 0d |  |
| 21 | Написание руководства пользователя | 2023-05-30 16:47 → 2023-05-26 12:27 (-4d) | 2023-06-21 16:47 → 2023-06-19 12:27 (-2d) |  | 2.37d → 0d |  |
| 22 | **Создание web-сайта и поддержка** | 2023-05-30 16:47 → 2023-05-26 12:27 (-4d) | 2023-07-04 11:47 → 2023-06-29 17:27 (-5d) |  | 2.37d → 0d |  |
| 23 | Разработка структуры сайта | 2023-05-30 16:47 → 2023-05-26 12:27 (-4d) | 2023-06-01 16:47 → 2023-05-30 12:27 (-2d) |  | 2.37d → 0d |  |
| 24 | Разработка дизайна сайта | 2023-06-01 16:47 → 2023-05-30 12:27 (-2d) | 2023-06-09 16:47 → 2023-06-07 12:27 (-2d) |  | 2.37d → 0d |  |
| 25 | Наполнение сайта | 2023-06-09 16:47 → 2023-06-07 12:27 (-2d) | 2023-07-04 11:47 → 2023-06-29 17:27 (-5d) |  | 2.37d → 0d |  |
| 26 | Тестирование сайта | 2023-06-27 11:47 → 2023-06-22 17:27 (-5d) | 2023-07-11 14:01 → 2023-07-05 15:41 (-6d) | 2.03w → 1.76w | 2.37d → 0d | resources Ведущий программист; Программист #1; Программист #2; Программист #3; Программист #4; Программист #5 → Ведущий программист; Программист #1; Программист #2; Программист #3; Программист #4; Программист #5; Программист #6 |
| 27 | Сдача сайта в эксплуатацию | 2023-07-11 14:01 → 2023-07-05 15:41 (-6d) | 2023-07-11 14:01 → 2023-07-05 15:41 (-6d) |  | 2.37d → 0d |  |
| 34 | **Презентация** |  | 2023-07-10 11:00 → 2023-06-26 11:00 (-14d) | 66.25d → 56.25d |  |  |
| 36 | Презентация 2 |  |  |  |  | resources Ведущий программист; Системный аналитик; Мультимедиа-корреспондент; Web-дизайнер; Пачка бумаги [2 шт] → Ведущий программист; Мультимедиа-корреспондент; Web-дизайнер; Пачка бумаги [2 шт] |
| 40 | Презентация 6 |  |  |  |  | resources Ведущий программист; Мультимедиа-корреспондент; Web-дизайнер; Пачка бумаги [2 шт] → Ведущий программист; Web-дизайнер; Пачка бумаги [2 шт] |

## Version 4 (data date 2023-05-12, saved 2023-03-14, file lab_04_task_5.mpp)

Last finish stays 2023-07-05. Complete tasks 1 → 17.

Changed:

| ID | Task | Start | Finish | Complete | Total float |
| --- | --- | --- | --- | --- | --- |
| 1 | Начало проекта | 2023-03-01 09:00 A | 2023-03-01 09:00 A | 0% → 100% | 10.38d → none |
| 2 | **Создание интерфейса** |  |  | 36% → 85% |  |
| 3 | **Разработка дизайна интерфейса** |  | 2023-04-11 18:00 A | 42% → 100% | 25.21d → none |
| 4 | Разработка 2D графических элементов | 2023-03-01 10:00 A | 2023-03-23 13:00 A | 0% → 100% | 38.71d → none |
| 5 | Разработка 3D графических элементов | 2023-03-01 10:00 A | 2023-03-16 12:00 A | 0% → 100% | 43.84d → none |
| 8 | **Построение базы объектов** | 2023-03-23 14:00 A |  | 0% → 57% |  |
| 9 | Анализ и построение структуры базы объектов | 2023-03-23 14:00 A | 2023-04-06 17:00 A | 0% → 100% | 11.98d → none |
| 10 | Программирование средств обработки базы объектов | 2023-04-06 17:00 A | 2023-04-13 17:00 A | 0% → 100% | 11.98d → none |
| 11 | Наполнение базы объектов | 2023-04-13 17:00 A |  | 0% → 42% |  |
| 12 | **Создание ядра GIS** | 2023-03-01 10:00 A |  | 0% → 83% |  |
| 13 | Анализ и проектирование ядра | 2023-03-01 10:00 A | 2023-03-23 13:00 A | 0% → 100% | 0d → none |
| 14 | Создание модели ядра | 2023-03-23 14:00 A | 2023-04-03 16:26 A | 0% → 100% | 0d → none |
| 15 | Тестирование модели ядра | 2023-04-03 16:26 A | 2023-04-04 15:06 A | 0% → 100% | 0d → none |
| 16 | Создание рабочей версии ядра | 2023-04-04 15:06 A |  | 0% → 72% |  |
| 17 | Создание мультимедиа - наполнения | 2023-04-12 09:00 A |  | 0% → 65% |  |
| 28 | **Совещание** | 2023-03-01 09:00 A | 2023-03-29 10:00 A | 0% → 100% | 0d → none |
| 29 | Совещание 1 | 2023-03-01 09:00 A | 2023-03-01 10:00 A | 0% → 100% |  |
| 30 | Совещание 2 | 2023-03-09 09:00 A | 2023-03-09 10:00 A | 0% → 100% |  |
| 31 | Совещание 3 | 2023-03-15 09:00 A | 2023-03-15 10:00 A | 0% → 100% |  |
| 32 | Совещание 4 | 2023-03-22 09:00 A | 2023-03-22 10:00 A | 0% → 100% |  |
| 33 | Совещание 5 | 2023-03-29 09:00 A | 2023-03-29 10:00 A | 0% → 100% |  |
| 34 | **Презентация** | 2023-04-03 09:00 A |  | 0% → 43% |  |
| 35 | Презентация 1 | 2023-04-03 09:00 A | 2023-04-03 11:00 A | 0% → 100% |  |
| 36 | Презентация 2 | 2023-04-17 09:00 A | 2023-04-17 11:00 A | 0% → 100% |  |
| 37 | Презентация 3 | 2023-05-02 09:00 A | 2023-05-02 11:00 A | 0% → 100% |  |
