# rk_01_1

How a schedule from MS Project changed from version to version. A marks actual dates.

## Version 1 (saved 2023-03-21, file rk_01_1.mpp)

| ID | WBS | Task | Duration | Start | Finish | Predecessors | Total float |
| --- | --- | --- | --- | --- | --- | --- | --- |
| 1 |  | Начало проекта | 0d | 2023-04-03 | 2023-04-03 |  | 0d |
| 2 |  | Установка ПО | 15d | 2023-04-04 | 2023-04-24 | 1FS+1d | 0d |
| 3 |  | Обучение персонала | 20d | 2023-04-18 | 2023-05-18 | 2SS+10d | 0d |
| 4 | 4 | **Разработка представительских сайтов** | 8d | 2023-05-19 | 2023-05-30 | 3 | 17d |
| 5 | 4.1 | **Разработка сайта 1** | 5d | 2023-05-19 | 2023-05-25 |  | 17d |
| 6 |  | Разработка дизайна сайта 1 | 2d | 2023-05-19 | 2023-05-22 |  | 17d |
| 7 |  | Программирование сайта 1 | 3d | 2023-05-23 | 2023-05-25 | 6 | 17d |
| 8 | 4.2 | **Разработка сайта 2** | 5d | 2023-05-24 | 2023-05-30 | 5FS-2d | 17d |
| 9 |  | Разработка дизайна сайта 2 | 2d | 2023-05-24 | 2023-05-25 |  | 17d |
| 10 |  | Программирование сайта 2 | 3d | 2023-05-26 | 2023-05-30 | 9 | 17d |
| 11 |  | Представительские сайты сосзданы | 0d | 2023-05-30 | 2023-05-30 | 4 | 17d |
| 12 | 6 | **Разработка корпоративного сайта** | 25d | 2023-05-19 | 2023-06-23 | 3 | 0d |
| 13 |  | Проектирование сайта | 5d | 2023-05-19 | 2023-05-25 |  | 0d |
| 14 |  | Программирование сайта | 15d | 2023-05-26 | 2023-06-16 | 13 | 0d |
| 15 |  | Наполнение сайта | 3d | 2023-06-14 | 2023-06-16 | 14FS-3d | 0d |
| 16 |  | Тестирование сайта | 5d | 2023-06-19 | 2023-06-23 | 15 | 0d |
| 17 |  | Сдача сайта заказчику | 0d | 2023-06-23 | 2023-06-23 | 16 | 0d |

## Version 2 (saved 2023-03-21, file rk_01_8.mpp)

Last finish 2023-06-23 → 2023-07-07 (+14d).

Changed:

| ID | Task | Start | Finish | Duration |
| --- | --- | --- | --- | --- |
| 2 | Установка ПО |  | 2023-04-24 → 2023-05-11 (+17d) | 15d → 25d |
| 3 | Обучение персонала |  | 2023-05-18 → 2023-06-01 (+14d) | 20d → 30d |
| 4 | **Разработка представительских сайтов** | 2023-05-19 → 2023-06-02 (+14d) | 2023-05-30 → 2023-06-14 (+15d) |  |
| 5 | **Разработка сайта 1** | 2023-05-19 → 2023-06-02 (+14d) | 2023-05-25 → 2023-06-08 (+14d) |  |
| 6 | Разработка дизайна сайта 1 | 2023-05-19 → 2023-06-02 (+14d) | 2023-05-22 → 2023-06-05 (+14d) |  |
| 7 | Программирование сайта 1 | 2023-05-23 → 2023-06-06 (+14d) | 2023-05-25 → 2023-06-08 (+14d) |  |
| 8 | **Разработка сайта 2** | 2023-05-24 → 2023-06-07 (+14d) | 2023-05-30 → 2023-06-14 (+15d) |  |
| 9 | Разработка дизайна сайта 2 | 2023-05-24 → 2023-06-07 (+14d) | 2023-05-25 → 2023-06-08 (+14d) |  |
| 10 | Программирование сайта 2 | 2023-05-26 → 2023-06-09 (+14d) | 2023-05-30 → 2023-06-14 (+15d) |  |
| 11 | Представительские сайты сосзданы | 2023-05-30 → 2023-06-14 (+15d) | 2023-05-30 → 2023-06-14 (+15d) |  |
| 12 | **Разработка корпоративного сайта** | 2023-05-19 → 2023-06-02 (+14d) | 2023-06-23 → 2023-07-07 (+14d) |  |
| 13 | Проектирование сайта | 2023-05-19 → 2023-06-02 (+14d) | 2023-05-25 → 2023-06-08 (+14d) |  |
| 14 | Программирование сайта | 2023-05-26 → 2023-06-09 (+14d) | 2023-06-16 → 2023-06-30 (+14d) |  |
| 15 | Наполнение сайта | 2023-06-14 → 2023-06-28 (+14d) | 2023-06-16 → 2023-06-30 (+14d) |  |
| 16 | Тестирование сайта | 2023-06-19 → 2023-07-03 (+14d) | 2023-06-23 → 2023-07-07 (+14d) |  |
| 17 | Сдача сайта заказчику | 2023-06-23 → 2023-07-07 (+14d) | 2023-06-23 → 2023-07-07 (+14d) |  |

## Version 3 (saved 2023-03-21, file rk_01_10_01.mpp)

Last finish 2023-07-07 → 2023-06-29 (-8d).

Changed:

| ID | Task | Start | Finish | Duration | Total float | Other |
| --- | --- | --- | --- | --- | --- | --- |
| 1 | Начало проекта |  |  |  |  | baseline start none → 2023-04-03; baseline finish none → 2023-04-03 |
| 2 | Установка ПО |  |  |  |  | baseline start none → 2023-04-04; baseline finish none → 2023-05-11 |
| 3 | Обучение персонала |  |  |  |  | baseline start none → 2023-04-18; baseline finish none → 2023-06-01 |
| 4 | **Разработка представительских сайтов** |  | 2023-06-14 → 2023-06-28 (+14d) | 8d → 18d | 17d → 0.33d | baseline start none → 2023-06-02; baseline finish none → 2023-06-28 |
| 5 | **Разработка сайта 1** |  |  |  | 17d → 0.33d | baseline start none → 2023-06-02; baseline finish none → 2023-06-08 |
| 6 | Разработка дизайна сайта 1 |  |  |  | 17d → 0.33d | baseline start none → 2023-06-02; baseline finish none → 2023-06-05 |
| 7 | Программирование сайта 1 |  |  |  | 17d → 0.33d | baseline start none → 2023-06-06; baseline finish none → 2023-06-08 |
| 8 | **Разработка сайта 2** |  | 2023-06-14 → 2023-06-28 (+14d) | 5d → 15d | 17d → 0.33d | baseline start none → 2023-06-07; baseline finish none → 2023-06-28 |
| 9 | Разработка дизайна сайта 2 |  |  |  | 17d → 0.33d | baseline start none → 2023-06-07; baseline finish none → 2023-06-08 |
| 10 | Программирование сайта 2 | 2023-06-09 → 2023-06-26 (+17d) | 2023-06-14 → 2023-06-28 (+14d) |  | 17d → 0.33d | baseline start none → 2023-06-26; baseline finish none → 2023-06-28 |
| 11 | Представительские сайты сосзданы | 2023-06-14 → 2023-06-28 (+14d) | 2023-06-14 → 2023-06-28 (+14d) |  | 17d → 0.33d | baseline start none → 2023-06-28; baseline finish none → 2023-06-28 |
| 12 | **Разработка корпоративного сайта** |  | 2023-07-07 → 2023-06-29 (-8d) | 25d → 18.33d |  | baseline start none → 2023-06-02; baseline finish none → 2023-06-29 |
| 13 | Проектирование сайта |  |  |  |  | baseline start none → 2023-06-02; baseline finish none → 2023-06-08 |
| 14 | Программирование сайта |  | 2023-06-30 → 2023-06-23 (-7d) | 15d → 10d |  | resources Соломин; Яковлева → Соломин; Яковлева; Тимофеев; baseline start none → 2023-06-09; baseline finish none → 2023-06-23 |
| 15 | Наполнение сайта | 2023-06-28 → 2023-06-21 (-7d) | 2023-06-30 → 2023-06-23 (-7d) |  |  | baseline start none → 2023-06-21; baseline finish none → 2023-06-23 |
| 16 | Тестирование сайта | 2023-07-03 → 2023-06-26 (-7d) | 2023-07-07 → 2023-06-29 (-8d) | 5d → 3.33d |  | resources Соломин; Яковлева → Соломин; Яковлева; Фомина; baseline start none → 2023-06-26; baseline finish none → 2023-06-29 |
| 17 | Сдача сайта заказчику | 2023-07-07 → 2023-06-29 (-8d) | 2023-07-07 → 2023-06-29 (-8d) |  |  | baseline start none → 2023-06-29; baseline finish none → 2023-06-29 |

## Version 4 (data date 2023-06-07, saved 2023-03-21, file rk_01_10.mpp)

Last finish 2023-06-29 → 2023-06-30 (+1d). Complete tasks 0 → 4.

Changed:

| ID | Task | Start | Finish | Duration | Complete | Total float |
| --- | --- | --- | --- | --- | --- | --- |
| 1 | Начало проекта | 2023-04-03 A | 2023-04-03 A |  | 0% → 100% | 0d → none |
| 2 | Установка ПО | 2023-04-04 A | 2023-05-11 A |  | 0% → 100% | 0d → none |
| 3 | Обучение персонала | 2023-04-18 A | 2023-06-01 A |  | 0% → 100% | 0d → none |
| 4 | **Разработка представительских сайтов** | 2023-06-02 A | 2023-06-28 → 2023-06-30 (+2d) | 18d → 20d | 0% → 25% | 0.33d → 0d |
| 5 | **Разработка сайта 1** | 2023-06-02 A | 2023-06-08 → 2023-06-27 (+19d) | 5d → 17d | 0% → 43% | 0.33d → 0d |
| 6 | Разработка дизайна сайта 1 | 2023-06-02 A | 2023-06-05 A |  | 0% → 100% | 0.33d → none |
| 7 | Программирование сайта 1 | 2023-06-06 A | 2023-06-08 → 2023-06-27 (+19d) | 3d → 5d | 0% → 20% | 0.33d → 0d |
| 8 | **Разработка сайта 2** | 2023-06-07 → 2023-06-26 (+19d) | 2023-06-28 → 2023-06-30 (+2d) | 15d → 5d |  | 0.33d → 0d |
| 9 | Разработка дизайна сайта 2 | 2023-06-07 → 2023-06-26 (+19d) | 2023-06-08 → 2023-06-27 (+19d) |  |  | 0.33d → 0d |
| 10 | Программирование сайта 2 | 2023-06-26 → 2023-06-28 (+2d) | 2023-06-28 → 2023-06-30 (+2d) |  |  | 0.33d → 0d |
| 11 | Представительские сайты сосзданы | 2023-06-28 → 2023-06-30 (+2d) | 2023-06-28 → 2023-06-30 (+2d) |  |  | 0.33d → 0d |
| 12 | **Разработка корпоративного сайта** | 2023-06-02 A |  |  | 0% → 19% | 0d → 1.67d |
| 13 | Проектирование сайта | 2023-06-02 A |  |  | 0% → 80% | 0d → 1.67d |
