# Создание карты города

How a schedule from MS Project changed from version to version. A marks actual dates.

## Version 1 (saved 2024-03-11)

Note of the change: Update: upload lab 3

| ID | WBS | Task | Duration | Start | Finish | Predecessors | Total float | Constraint |
| --- | --- | --- | --- | --- | --- | --- | --- | --- |
| 1 |  | Начало проекта | 0w | 2024-03-01 09:00 | 2024-03-01 09:00 |  | 44.73d |  |
| 2 | 2 | **Создание интерфейса** | 80.48d | 2024-03-01 10:00 | 2024-06-26 14:48 | 1 | 0d |  |
| 3 | 2.1 | **Разработка дизайна интерфейса** | 26.75d | 2024-03-01 10:00 | 2024-04-09 17:00 |  | 44.61d |  |
| 4 |  | Разработка 2D графических элементов | 3w | 2024-03-01 10:00 | 2024-03-26 10:00 |  | 44.61d |  |
| 5 |  | Разработка 3D графических элементов | 2w | 2024-03-01 10:00 | 2024-03-18 16:00 | 4SS | 44.61d |  |
| 6 |  | Создание заставки | 3w | 2024-03-18 16:00 | 2024-04-09 17:00 | 5 | 44.61d |  |
| 7 |  | Программирование интерфейса | 1.5w | 2024-06-17 09:48 | 2024-06-26 14:48 | 3, 12 | 0d |  |
| 8 | 3 | **Построение базы объектов** | 85.75d | 2024-03-26 10:00 | 2024-07-25 17:00 |  | 1.98d |  |
| 9 |  | Анализ и построение структуры базы объектов | 2w | 2024-03-26 10:00 | 2024-04-09 17:00 |  | 1.98d |  |
| 10 |  | Программирование средств обработки базы объектов | 3w | 2024-04-09 17:00 | 2024-04-30 17:00 | 9 | 1.98d |  |
| 11 |  | Наполнение базы объектов | 12w | 2024-04-30 17:00 | 2024-07-25 17:00 | 10 | 1.98d |  |
| 12 | 4 | **Создание ядра GIS** | 72.98d | 2024-03-01 10:00 | 2024-06-17 09:48 |  | 0d |  |
| 13 |  | Анализ и проектирование ядра | 3w | 2024-03-01 10:00 | 2024-03-26 10:00 |  | 0d |  |
| 14 |  | Создание модели ядра | 2.09w | 2024-03-26 10:00 | 2024-04-09 14:33 | 13 | 0d |  |
| 15 |  | Тестирование модели ядра | 1w | 2024-04-09 14:33 | 2024-04-16 14:33 | 14 | 0d |  |
| 16 |  | Создание рабочей версии ядра | 8.31w | 2024-04-16 14:33 | 2024-06-17 09:48 | 15 | 0d |  |
| 17 |  | Создание мультимедиа - наполнения | 6w | 2024-04-09 17:00 | 2024-05-27 11:00 | 3 | 44.61d |  |
| 18 |  | Создание справочной системы | 2w | 2024-07-08 12:48 | 2024-07-22 15:48 | 7 | 5.13d |  |
| 19 | 7 | **Создание руководства пользователя** | 17.75d | 2024-06-11 14:48 | 2024-07-08 11:48 | 7FS-10d | 0d |  |
| 20 |  | Разработка дизайна руководства | 1w | 2024-06-11 14:48 | 2024-06-19 16:48 |  | 0d |  |
| 21 |  | Написание руководства пользователя | 3w | 2024-06-14 14:48 | 2024-07-08 11:48 | 20SS+2d | 0d |  |
| 22 | 8 | **Создание web-сайта и поддержка** | 24d | 2024-06-14 14:48 | 2024-07-18 14:48 |  | 0d |  |
| 23 |  | Разработка структуры сайта | 1d | 2024-06-14 14:48 | 2024-06-17 14:48 | 21SS | 0d |  |
| 24 |  | Разработка дизайна сайта | 1.48w | 2024-06-17 15:48 | 2024-06-27 09:48 | 23 | 0d |  |
| 25 |  | Наполнение сайта | 3w | 2024-06-27 09:48 | 2024-07-18 14:48 | 24 | 0d |  |
| 26 |  | Тестирование сайта | 2.45w | 2024-07-11 14:48 | 2024-07-29 16:51 | 22FS-1w | 0d |  |
| 27 |  | Сдача сайта в эксплуатацию | 0w | 2024-07-29 16:51 | 2024-07-29 16:51 | 26 | 0d |  |
| 28 | 11 | **Совещание** | 98d | 2024-03-06 09:00 | 2024-07-24 18:00 |  |  |  |
| 29 |  | Совещание 1 | 1h | 2024-03-06 09:00 | 2024-03-06 10:00 |  |  | start no earlier than 2024-03-06 09:00 |
| 30 |  | Совещание 2 | 1h | 2024-03-13 09:00 | 2024-03-13 10:00 |  |  | start no earlier than 2024-03-13 09:00 |
| 31 |  | Совещание 3 | 1h | 2024-03-20 09:00 | 2024-03-20 10:00 |  |  | start no earlier than 2024-03-20 09:00 |
| 32 |  | Совещание 4 | 1h | 2024-03-27 09:00 | 2024-03-27 10:00 |  |  | start no earlier than 2024-03-27 09:00 |
| 33 |  | Совещание 5 | 1h | 2024-04-03 09:00 | 2024-04-03 10:00 |  |  | start no earlier than 2024-04-03 09:00 |
| 34 |  | Совещание 6 | 1h | 2024-04-10 09:00 | 2024-04-10 10:00 |  |  | start no earlier than 2024-04-10 09:00 |
| 35 |  | Совещание 7 | 1h | 2024-04-17 09:00 | 2024-04-17 10:00 |  |  | start no earlier than 2024-04-17 09:00 |
| 36 |  | Совещание 8 | 1h | 2024-04-24 09:00 | 2024-04-24 10:00 |  |  | start no earlier than 2024-04-24 09:00 |
| 37 |  | Совещание 9 | 1h | 2024-05-01 09:00 | 2024-05-01 10:00 |  |  | start no earlier than 2024-05-01 09:00 |
| 38 |  | Совещание 10 | 1h | 2024-05-08 09:00 | 2024-05-08 10:00 |  |  | start no earlier than 2024-05-08 09:00 |
| 39 |  | Совещание 11 | 1h | 2024-05-15 09:00 | 2024-05-15 10:00 |  |  | start no earlier than 2024-05-15 09:00 |
| 40 |  | Совещание 12 | 1h | 2024-05-22 09:00 | 2024-05-22 10:00 |  |  | start no earlier than 2024-05-22 09:00 |
| 41 |  | Совещание 13 | 1h | 2024-05-29 09:00 | 2024-05-29 10:00 |  |  | start no earlier than 2024-05-29 09:00 |
| 42 |  | Совещание 14 | 1h | 2024-06-05 09:00 | 2024-06-05 10:00 |  |  | start no earlier than 2024-06-05 09:00 |
| 43 |  | Совещание 15 | 1h | 2024-06-12 09:00 | 2024-06-12 10:00 |  |  | start no earlier than 2024-06-12 09:00 |
| 44 |  | Совещание 16 | 1h | 2024-06-19 09:00 | 2024-06-19 10:00 |  |  | start no earlier than 2024-06-19 09:00 |
| 45 |  | Совещание 17 | 1h | 2024-06-26 09:00 | 2024-06-26 10:00 |  |  | start no earlier than 2024-06-26 09:00 |
| 46 |  | Совещание 18 | 1h | 2024-07-03 09:00 | 2024-07-03 10:00 |  |  | start no earlier than 2024-07-03 09:00 |
| 47 |  | Совещание 19 | 1h | 2024-07-10 09:00 | 2024-07-10 10:00 |  |  | start no earlier than 2024-07-10 09:00 |
| 48 |  | Совещание 20 | 1h | 2024-07-17 09:00 | 2024-07-17 10:00 |  |  | start no earlier than 2024-07-17 09:00 |
| 49 |  | Совещание 21 | 1h | 2024-07-24 09:00 | 2024-07-24 10:00 |  |  | start no earlier than 2024-07-24 09:00 |

## Version 2 (saved 2024-03-12)

Last finish 2024-07-29 → 2024-08-01 (+3d).

Changed:

| ID | Task | Start | Finish | Duration | Total float |
| --- | --- | --- | --- | --- | --- |
| 2 | **Создание интерфейса** |  | 2024-06-26 14:48 → 2024-07-01 14:48 (+5d) |  |  |
| 7 | Программирование интерфейса | 2024-06-17 09:48 → 2024-06-20 09:48 (+3d) | 2024-06-26 14:48 → 2024-07-01 14:48 (+5d) |  |  |
| 8 | **Построение базы объектов** |  | 2024-07-25 17:00 → 2024-07-30 17:00 (+5d) |  |  |
| 10 | Программирование средств обработки базы объектов |  | 2024-04-30 17:00 → 2024-05-03 17:00 (+3d) |  |  |
| 11 | Наполнение базы объектов | 2024-04-30 17:00 → 2024-05-03 17:00 (+3d) | 2024-07-25 17:00 → 2024-07-30 17:00 (+5d) |  |  |
| 12 | **Создание ядра GIS** |  | 2024-06-17 09:48 → 2024-06-20 09:48 (+3d) |  |  |
| 16 | Создание рабочей версии ядра |  | 2024-06-17 09:48 → 2024-06-20 09:48 (+3d) |  |  |
| 17 | Создание мультимедиа - наполнения |  | 2024-05-27 11:00 → 2024-05-30 11:00 (+3d) |  |  |
| 18 | Создание справочной системы | 2024-07-08 12:48 → 2024-07-15 09:00 (+7d) | 2024-07-22 15:48 → 2024-07-29 11:00 (+7d) |  | 5.13d → 3.61d |
| 19 | **Создание руководства пользователя** | 2024-06-11 14:48 → 2024-06-17 14:48 (+6d) | 2024-07-08 11:48 → 2024-07-11 11:48 (+3d) |  |  |
| 20 | Разработка дизайна руководства | 2024-06-11 14:48 → 2024-06-17 14:48 (+6d) | 2024-06-19 16:48 → 2024-06-24 16:48 (+5d) |  |  |
| 21 | Написание руководства пользователя | 2024-06-14 14:48 → 2024-06-19 14:48 (+5d) | 2024-07-08 11:48 → 2024-07-11 11:48 (+3d) |  |  |
| 22 | **Создание web-сайта и поддержка** | 2024-06-14 14:48 → 2024-06-19 14:48 (+5d) | 2024-07-18 14:48 → 2024-07-23 14:48 (+5d) |  |  |
| 23 | Разработка структуры сайта | 2024-06-14 14:48 → 2024-06-19 14:48 (+5d) | 2024-06-17 14:48 → 2024-06-20 14:48 (+3d) |  |  |
| 24 | Разработка дизайна сайта | 2024-06-17 15:48 → 2024-06-20 15:48 (+3d) | 2024-06-27 09:48 → 2024-07-02 09:48 (+5d) |  |  |
| 25 | Наполнение сайта | 2024-06-27 09:48 → 2024-07-02 09:48 (+5d) | 2024-07-18 14:48 → 2024-07-23 14:48 (+5d) |  |  |
| 26 | Тестирование сайта | 2024-07-11 14:48 → 2024-07-16 14:48 (+5d) | 2024-07-29 16:51 → 2024-08-01 16:51 (+3d) |  |  |
| 27 | Сдача сайта в эксплуатацию | 2024-07-29 16:51 → 2024-08-01 16:51 (+3d) | 2024-07-29 16:51 → 2024-08-01 16:51 (+3d) |  |  |
| 28 | **Совещание** |  |  | 98d → 95d |  |
