# rk

How a schedule from MS Project changed from version to version. A marks actual dates.

## Version 1 (saved 2024-03-26, file task2.mpp)

| ID | Task | Duration | Start | Finish | Total float |
| --- | --- | --- | --- | --- | --- |
| 1 | Начало проекта | 0d | 2024-04-01 | 2024-04-01 | 20d |
| 2 | Установка ПО | 15d | 2024-04-01 | 2024-04-19 | 5d |
| 3 | Обучение персонала | 20d | 2024-04-01 | 2024-04-26 | 0d |
| 4 | Разработка представительских сайтов | 1d | 2024-04-01 | 2024-04-01 | 19d |
| 5 | Разработка сайта 1 | 5d | 2024-04-01 | 2024-04-05 | 15d |
| 6 | Разработка сайта 2 | 5d | 2024-04-01 | 2024-04-05 | 15d |
| 7 | Представительские сайты созданы | 0d | 2024-04-01 | 2024-04-01 | 20d |
| 8 | Разработка корпоративного сайта | 1d | 2024-04-01 | 2024-04-01 | 19d |
| 9 | Проектирование сайта | 5d | 2024-04-01 | 2024-04-05 | 15d |
| 10 | Программирование сайта | 15d | 2024-04-01 | 2024-04-19 | 5d |
| 11 | Наполнение сайта | 3d | 2024-04-01 | 2024-04-03 | 17d |
| 12 | Тестирование сайта | 5d | 2024-04-01 | 2024-04-05 | 15d |
| 13 | Сдача сайта заказчику | 0d | 2024-04-01 | 2024-04-01 | 20d |

## Version 2 (saved 2024-03-26, file task3.mpp)

Last finish stays 2024-04-26.

Changed:

| ID | Task | Finish | Duration | Total float |
| --- | --- | --- | --- | --- |
| 4 | **Разработка представительских сайтов** | 2024-04-01 → 2024-04-05 (+4d) | 1d → 5d | 19d → 15d |
| 8 | **Разработка корпоративного сайта** | 2024-04-01 → 2024-04-19 (+18d) | 1d → 15d | 19d → 5d |

## Version 3 (saved 2024-03-26, file task4.mpp)

Last finish 2024-04-26 → 2024-06-25 (+60d).

Changed:

| ID | Task | Start | Finish | Duration | Total float | Predecessors |
| --- | --- | --- | --- | --- | --- | --- |
| 2 | Установка ПО | 2024-04-01 → 2024-04-02 (+1d) | 2024-04-19 → 2024-04-22 (+3d) |  | 5d → 0d | none → 1FS+1d |
| 3 | Обучение персонала | 2024-04-01 → 2024-04-16 (+15d) | 2024-04-26 → 2024-05-20 (+24d) |  |  | none → 2SS+10d |
| 4 | **Разработка представительских сайтов** | 2024-04-01 → 2024-05-21 (+50d) | 2024-04-05 → 2024-05-30 (+55d) | 5d → 8d | 15d → 17d | none → 3 |
| 5 | Разработка сайта 1 | 2024-04-01 → 2024-05-21 (+50d) | 2024-04-05 → 2024-05-27 (+52d) |  | 15d → 17d |  |
| 6 | Разработка сайта 2 | 2024-04-01 → 2024-05-24 (+53d) | 2024-04-05 → 2024-05-30 (+55d) |  | 15d → 17d | none → 5FS-2d |
| 7 | Представительские сайты созданы | 2024-04-01 → 2024-05-30 (+59d) | 2024-04-01 → 2024-05-30 (+59d) |  | 20d → 17d | none → 4 |
| 8 | **Разработка корпоративного сайта** | 2024-04-01 → 2024-05-21 (+50d) | 2024-04-19 → 2024-06-25 (+67d) | 15d → 25d | 5d → 0d | none → 3 |
| 9 | Проектирование сайта | 2024-04-01 → 2024-05-21 (+50d) | 2024-04-05 → 2024-05-27 (+52d) |  | 15d → 0d |  |
| 10 | Программирование сайта | 2024-04-01 → 2024-05-28 (+57d) | 2024-04-19 → 2024-06-18 (+60d) |  | 5d → 0d | none → 9 |
| 11 | Наполнение сайта | 2024-04-01 → 2024-06-14 (+74d) | 2024-04-03 → 2024-06-18 (+76d) |  | 17d → 0d | none → 10FS-3d |
| 12 | Тестирование сайта | 2024-04-01 → 2024-06-19 (+79d) | 2024-04-05 → 2024-06-25 (+81d) |  | 15d → 0d | none → 11 |
| 13 | Сдача сайта заказчику | 2024-04-01 → 2024-06-25 (+85d) | 2024-04-01 → 2024-06-25 (+85d) |  | 20d → 0d | none → 12 |

## Version 4 (saved 2024-03-26, file task5.mpp)

Last finish stays 2024-06-25.

Changed:

| ID | Task | Other |
| --- | --- | --- |
| 4 | **Разработка представлительских сайтов** | was named Разработка представительских сайтов |
| 7 | Пользовательские сайты созданы | was named Представительские сайты созданы |

## Version 5 (saved 2024-03-26, file task6.mpp)

Last finish stays 2024-06-25.

Changed:

| ID | Task | Start | Finish | Duration | Total float | Other |
| --- | --- | --- | --- | --- | --- | --- |
| 2 | Установка ПО |  |  |  |  | resources none → Программное обеспечение; Соколов |
| 3 | Обучение персонала |  |  |  |  | resources none → Бумага [3 пач./мес.]; Картриджы для принтера; Кузнецов; Петров; Преподаватели [400%]; Соломин; Тимофеев; Яковлева |
| 4 | **Разработка представительских сайтов** |  | 2024-05-30 → 2024-06-03 (+4d) | 8d → 10d | 17d → 15d | was named Разработка представлительских сайтов |
| 5 | Разработка сайта 1 |  |  |  | 17d → 15d | resources none → Кузнецов; Тимофеев |
| 6 | Разработка сайта 2 | 2024-05-24 → 2024-05-28 (+4d) | 2024-05-30 → 2024-06-03 (+4d) |  | 17d → 15d | resources none → Кузнецов; Тимофеев |
| 7 | Представительские сайты созданы | 2024-05-30 → 2024-06-03 (+4d) | 2024-05-30 → 2024-06-03 (+4d) |  | 17d → 15d | was named Пользовательские сайты созданы |
| 9 | Проектирование сайта |  |  |  |  | resources none → Петров; Соколов |
| 10 | Программирование сайта |  |  |  |  | resources none → Соломин; Яковлева |
| 11 | Наполнение сайта |  |  |  |  | resources none → Фомина |
| 12 | Тестирование сайта |  |  |  |  | resources none → Соломин; Яковлева |

## Version 6 (saved 2024-03-26, file task7.mpp)

Last finish stays 2024-06-25.

Added:

| ID | Task | Duration | Start | Finish | Predecessors | Resources |
| --- | --- | --- | --- | --- | --- | --- |
| 6 | Разработка дизайна сайта 1 | 2d | 2024-05-21 | 2024-05-22 |  | Кузнецов |
| 7 | Программирование сайта 1 | 3d | 2024-05-23 | 2024-05-27 | 6 | Тимофеев |
| 9 | Разработка дизайна сайта 2 | 2d | 2024-05-24 | 2024-05-27 |  | Кузнецов |
| 10 | Программирование дизайна сайта 2 | 3d | 2024-05-28 | 2024-05-30 | 9 | Тимофеев |

Changed:

| ID | Task | Start | Finish | Duration | Total float | Other |
| --- | --- | --- | --- | --- | --- | --- |
| 4 | **Разработка представительских сайтов** |  | 2024-06-03 → 2024-05-30 (-4d) | 10d → 8d | 15d → 17d |  |
| 5 | **Разработка сайта 1** |  |  |  | 15d → 17d | resources Кузнецов; Тимофеев → none |
| 8 | **Разработка сайта 2** | 2024-05-28 → 2024-05-24 (-4d) | 2024-06-03 → 2024-05-30 (-4d) |  | 15d → 17d | resources Кузнецов; Тимофеев → none |
| 11 | Представительские сайты созданы | 2024-06-03 → 2024-05-30 (-4d) | 2024-06-03 → 2024-05-30 (-4d) |  | 15d → 17d |  |

## Version 7 (saved 2024-03-26, file task8.mpp)

Last finish 2024-06-25 → 2024-06-28 (+3d).

Changed:

| ID | Task | Start | Finish | Duration | Other |
| --- | --- | --- | --- | --- | --- |
| 3 | Обучение персонала |  | 2024-05-20 → 2024-05-23 (+3d) | 20d → 17.14d | resources Бумага [3 пач./мес.]; Картриджы для принтера; Кузнецов; Петров; Преподаватели [400%]; Соломин; Тимофеев; Яковлева → Бумага [3 пач./мес.]; Картриджы для принтера; Кузнецов; Петров; Преподаватели [300%]; Соломин; Тимофеев; Яковлева; Соколов |
| 4 | **Разработка представительских сайтов** | 2024-05-21 → 2024-05-23 (+2d) | 2024-05-30 → 2024-06-04 (+5d) |  |  |
| 5 | **Разработка сайта 1** | 2024-05-21 → 2024-05-23 (+2d) | 2024-05-27 → 2024-05-30 (+3d) |  |  |
| 6 | Разработка дизайна сайта 1 | 2024-05-21 → 2024-05-23 (+2d) | 2024-05-22 → 2024-05-27 (+5d) |  |  |
| 7 | Программирование сайта 1 | 2024-05-23 → 2024-05-27 (+4d) | 2024-05-27 → 2024-05-30 (+3d) |  |  |
| 8 | **Разработка сайта 2** | 2024-05-24 → 2024-05-28 (+4d) | 2024-05-30 → 2024-06-04 (+5d) |  |  |
| 9 | Разработка дизайна сайта 2 | 2024-05-24 → 2024-05-28 (+4d) | 2024-05-27 → 2024-05-30 (+3d) |  |  |
| 10 | Программирование дизайна сайта 2 | 2024-05-28 → 2024-05-30 (+2d) | 2024-05-30 → 2024-06-04 (+5d) |  |  |
| 11 | Представительские сайты созданы | 2024-05-30 → 2024-06-04 (+5d) | 2024-05-30 → 2024-06-04 (+5d) |  |  |
| 12 | **Разработка корпоративного сайта** | 2024-05-21 → 2024-05-23 (+2d) | 2024-06-25 → 2024-06-28 (+3d) |  |  |
| 13 | Проектирование сайта | 2024-05-21 → 2024-05-23 (+2d) | 2024-05-27 → 2024-05-30 (+3d) |  |  |
| 14 | Программирование сайта | 2024-05-28 → 2024-05-30 (+2d) | 2024-06-18 → 2024-06-21 (+3d) |  |  |
| 15 | Наполнение сайта | 2024-06-14 → 2024-06-18 (+4d) | 2024-06-18 → 2024-06-21 (+3d) |  |  |
| 16 | Тестирование сайта | 2024-06-19 → 2024-06-21 (+2d) | 2024-06-25 → 2024-06-28 (+3d) |  |  |
| 17 | Сдача сайта заказчику | 2024-06-25 → 2024-06-28 (+3d) | 2024-06-25 → 2024-06-28 (+3d) |  |  |

## Version 8 (saved 2024-03-26, file task8_1.mpp)

Last finish stays 2024-06-28.

Changed:

| ID | Task | Duration | Other |
| --- | --- | --- | --- |
| 3 | Обучение персонала | 17.14d → 22.14d | constraint none → start no earlier than 2023-04-18 |

## Version 9 (saved 2024-03-26, file task8_2.mpp)

Last finish 2024-06-28 → 2024-07-08 (+10d).

Changed:

| ID | Task | Start | Finish | Duration | Other |
| --- | --- | --- | --- | --- | --- |
| 2 | Установка ПО |  | 2024-04-22 → 2024-05-13 (+21d) | 15d → 25d |  |
| 3 | Обучение персонала |  | 2024-05-23 → 2024-05-31 (+8d) | 22.14d → 28.57d | constraint start no earlier than 2023-04-18 → none |
| 4 | **Разработка представительских сайтов** | 2024-05-23 → 2024-05-31 (+8d) | 2024-06-04 → 2024-06-13 (+9d) |  |  |
| 5 | **Разработка сайта 1** | 2024-05-23 → 2024-05-31 (+8d) | 2024-05-30 → 2024-06-07 (+8d) |  |  |
| 6 | Разработка дизайна сайта 1 | 2024-05-23 → 2024-05-31 (+8d) | 2024-05-27 → 2024-06-04 (+8d) |  |  |
| 7 | Программирование сайта 1 | 2024-05-27 → 2024-06-04 (+8d) | 2024-05-30 → 2024-06-07 (+8d) |  |  |
| 8 | **Разработка сайта 2** | 2024-05-28 → 2024-06-05 (+8d) | 2024-06-04 → 2024-06-13 (+9d) |  |  |
| 9 | Разработка дизайна сайта 2 | 2024-05-28 → 2024-06-05 (+8d) | 2024-05-30 → 2024-06-07 (+8d) |  |  |
| 10 | Программирование дизайна сайта 2 | 2024-05-30 → 2024-06-07 (+8d) | 2024-06-04 → 2024-06-13 (+9d) |  |  |
| 11 | Представительские сайты созданы | 2024-06-04 → 2024-06-13 (+9d) | 2024-06-04 → 2024-06-13 (+9d) |  |  |
| 12 | **Разработка корпоративного сайта** | 2024-05-23 → 2024-05-31 (+8d) | 2024-06-28 → 2024-07-08 (+10d) |  |  |
| 13 | Проектирование сайта | 2024-05-23 → 2024-05-31 (+8d) | 2024-05-30 → 2024-06-07 (+8d) |  |  |
| 14 | Программирование сайта | 2024-05-30 → 2024-06-07 (+8d) | 2024-06-21 → 2024-07-01 (+10d) |  |  |
| 15 | Наполнение сайта | 2024-06-18 → 2024-06-26 (+8d) | 2024-06-21 → 2024-07-01 (+10d) |  |  |
| 16 | Тестирование сайта | 2024-06-21 → 2024-07-01 (+10d) | 2024-06-28 → 2024-07-08 (+10d) |  |  |
| 17 | Сдача сайта заказчику | 2024-06-28 → 2024-07-08 (+10d) | 2024-06-28 → 2024-07-08 (+10d) |  |  |

## Version 10 (saved 2024-03-26, file task9.mpp)

Last finish 2024-07-08 → 2024-06-28 (-10d).

Changed:

| ID | Task | Start | Finish | Duration | Total float | Other |
| --- | --- | --- | --- | --- | --- | --- |
| 1 | Начало проекта |  |  |  |  | baseline start none → 2024-04-01; baseline finish none → 2024-04-01 |
| 2 | Установка ПО |  | 2024-05-13 → 2024-04-22 (-21d) | 25d → 15d |  | baseline start none → 2024-04-02; baseline finish none → 2024-04-22 |
| 3 | Обучение персонала |  | 2024-05-31 → 2024-05-23 (-8d) | 28.57d → 22.14d |  | constraint none → start no earlier than 2023-04-18; baseline start none → 2024-04-16; baseline finish none → 2024-05-23 |
| 4 | **Разработка представительских сайтов** | 2024-05-31 → 2024-05-30 (-1d) | 2024-06-13 → 2024-06-11 (-2d) |  | 17d → 12d | baseline start none → 2024-05-30; baseline finish none → 2024-06-11 |
| 5 | **Разработка сайта 1** | 2024-05-31 → 2024-05-30 (-1d) | 2024-06-07 → 2024-06-06 (-1d) |  | 17d → 12d | baseline start none → 2024-05-30; baseline finish none → 2024-06-06 |
| 6 | Разработка дизайна сайта 1 | 2024-05-31 → 2024-05-30 (-1d) | 2024-06-04 → 2024-06-03 (-1d) |  | 17d → 12d | baseline start none → 2024-05-30; baseline finish none → 2024-06-03 |
| 7 | Программирование сайта 1 | 2024-06-04 → 2024-06-03 (-1d) | 2024-06-07 → 2024-06-06 (-1d) |  | 17d → 12d | baseline start none → 2024-06-03; baseline finish none → 2024-06-06 |
| 8 | **Разработка сайта 2** | 2024-06-05 → 2024-06-04 (-1d) | 2024-06-13 → 2024-06-11 (-2d) |  | 17d → 12d | baseline start none → 2024-06-04; baseline finish none → 2024-06-11 |
| 9 | Разработка дизайна сайта 2 | 2024-06-05 → 2024-06-04 (-1d) | 2024-06-07 → 2024-06-06 (-1d) |  | 17d → 12d | baseline start none → 2024-06-04; baseline finish none → 2024-06-06 |
| 10 | Программирование дизайна сайта 2 | 2024-06-07 → 2024-06-06 (-1d) | 2024-06-13 → 2024-06-11 (-2d) |  | 17d → 12d | baseline start none → 2024-06-06; baseline finish none → 2024-06-11 |
| 11 | Представительские сайты созданы | 2024-06-13 → 2024-06-11 (-2d) | 2024-06-13 → 2024-06-11 (-2d) |  | 17d → 12d | baseline start none → 2024-06-11; baseline finish none → 2024-06-11 |
| 12 | **Разработка корпоративного сайта** | 2024-05-31 → 2024-05-23 (-8d) | 2024-07-08 → 2024-06-28 (-10d) |  |  | baseline start none → 2024-05-23; baseline finish none → 2024-06-28 |
| 13 | Проектирование сайта | 2024-05-31 → 2024-05-23 (-8d) | 2024-06-07 → 2024-05-30 (-8d) |  |  | resources Петров; Соколов → Кузнецов; Тимофеев; baseline start none → 2024-05-23; baseline finish none → 2024-05-30 |
| 14 | Программирование сайта | 2024-06-07 → 2024-05-30 (-8d) | 2024-07-01 → 2024-06-21 (-10d) |  |  | baseline start none → 2024-05-30; baseline finish none → 2024-06-21 |
| 15 | Наполнение сайта | 2024-06-26 → 2024-06-18 (-8d) | 2024-07-01 → 2024-06-21 (-10d) |  |  | baseline start none → 2024-06-18; baseline finish none → 2024-06-21 |
| 16 | Тестирование сайта | 2024-07-01 → 2024-06-21 (-10d) | 2024-07-08 → 2024-06-28 (-10d) |  |  | baseline start none → 2024-06-21; baseline finish none → 2024-06-28 |
| 17 | Сдача сайта заказчику | 2024-07-08 → 2024-06-28 (-10d) | 2024-07-08 → 2024-06-28 (-10d) |  |  | baseline start none → 2024-06-28; baseline finish none → 2024-06-28 |

## Version 11 (data date 2024-06-03, saved 2024-03-26, file task10.mpp)

Last finish 2024-06-28 → 2024-06-21 (-7d). Complete tasks 0 → 5.

Changed:

| ID | Task | Start | Finish | Duration | Complete | Total float |
| --- | --- | --- | --- | --- | --- | --- |
| 1 | Начало проекта | 2024-04-01 A | 2024-04-01 A |  | 0% → 100% | 0d → none |
| 2 | Установка ПО | 2024-04-02 A | 2024-04-22 → 2024-05-20 A (+28d) | 15d → 16d | 0% → 100% | 0d → none |
| 3 | Обучение персонала | 2024-04-16 A | 2024-05-23 → 2024-05-19 A (-4d) | 22.14d → 19d | 0% → 100% | 0d → none |
| 4 | **Разработка представительских сайтов** | 2024-05-30 A | 2024-06-11 → 2024-06-13 (+2d) | 8d → 9d | 0% → 27% | 12d → 6.86d |
| 5 | **Разработка сайта 1** | 2024-05-30 A | 2024-06-06 → 2024-06-07 (+1d) | 5d → 6d | 0% → 50% | 12d → 6.86d |
| 6 | Разработка дизайна сайта 1 | 2024-05-30 A | 2024-06-03 → 2024-06-04 A (+1d) | 2d → 3d | 0% → 100% | 12d → none |
| 7 | Программирование сайта 1 | 2024-06-03 → 2024-06-04 (+1d) | 2024-06-06 → 2024-06-07 (+1d) |  |  | 12d → 6.86d |
| 8 | **Разработка сайта 2** | 2024-06-04 → 2024-06-05 (+1d) | 2024-06-11 → 2024-06-13 (+2d) |  |  | 12d → 6.86d |
| 9 | Разработка дизайна сайта 2 | 2024-06-04 → 2024-06-05 (+1d) | 2024-06-06 → 2024-06-07 (+1d) |  |  | 12d → 6.86d |
| 10 | Программирование дизайна сайта 2 | 2024-06-06 → 2024-06-07 (+1d) | 2024-06-11 → 2024-06-13 (+2d) |  |  | 12d → 6.86d |
| 11 | Представительские сайты созданы | 2024-06-11 → 2024-06-13 (+2d) | 2024-06-11 → 2024-06-13 (+2d) |  |  | 12d → 6.86d |
| 12 | **Разработка корпоративного сайта** | 2024-05-23 → 2024-05-20 A (-3d) | 2024-06-28 → 2024-06-21 (-7d) | 25d → 24d | 0% → 41% |  |
| 13 | Проектирование сайта | 2024-05-23 → 2024-05-20 A (-3d) | 2024-05-30 → 2024-05-23 A (-7d) | 5d → 4d | 0% → 100% | 0d → none |
| 14 | Программирование сайта | 2024-05-30 → 2024-05-24 A (-6d) | 2024-06-21 → 2024-06-14 (-7d) |  | 0% → 47% |  |
| 15 | Наполнение сайта | 2024-06-18 → 2024-06-11 (-7d) | 2024-06-21 → 2024-06-14 (-7d) |  |  |  |
| 16 | Тестирование сайта | 2024-06-21 → 2024-06-17 (-4d) | 2024-06-28 → 2024-06-21 (-7d) |  |  |  |
| 17 | Сдача сайта заказчику | 2024-06-28 → 2024-06-21 (-7d) | 2024-06-28 → 2024-06-21 (-7d) |  |  |  |
